# Карта города

Schedule from MS Project, 2026-03-02 to 2026-07-30, status date 2026-05-15, costs in ₽, A marks actual dates.
Длительность - 6 месяцев / Бюджет - 50.000 рублей / Состав - 16 человек
·Длительность - 6 месяцев/ ·Бюджет - 50.000 рублей/ ·Состав - 16 человек

## Calendars

- Стандартный: Mon-Fri 09:00-13:00, 14:00-18:00; Sat-Sun off. Exceptions (off unless hours are given): 2026-03-09 (8 марта), 2026-04-30 09:00-13:00, 14:00-17:00 (Сокращенный день), 2026-05-01 (Первые майские), 2026-05-08 09:00-13:00, 14:00-17:00 (Сокращенный день), 2026-05-11 (Вторые майские), 2026-06-11 09:00-13:00, 14:00-17:00 (Сокращенный день), 2026-06-12 (День России).

## Resources

| Resource | Group | Rate | Cost per use |
| --- | --- | --- | --- |
| Ведущий программист | Программирование | 10 | 100 |
| Программист №1 | Программирование | 7 | 50 |
| Программист №2 | Программирование | 7 | 50 |
| Программист №3 | Программирование | 7 | 50 |
| Программист №4 | Программирование | 7 | 50 |
| Системный аналитик | Анализ | 20 | 300 |
| Художник-дизайнер | Дизайн | 8 | 70 |
| Технический писатель | Документация | 5 | 20 |
| Web-дизайнер | Internet | 7 | 50 |
| 3D аниматор | Дизайн | 8 | 70 |
| Мультимедиа-корреспондент | М-Медиа | 3 | 20 |
| Наборщик данных №1 | Ввод данных | 2 | 10 |
| Наборщик данных №2 | Ввод данных | 2 | 10 |
| Наборщик данных №3 | Ввод данных | 2 | 10 |
| Наборщик данных №4 | Ввод данных | 2 | 10 |
| Наборщик данных №5 | Ввод данных | 2 | 10 |
| Сервер | Оборудование | 2 |  |
| Специальное ПО | Специальное ПО | 120 |  |
| Наборщик данных №6 | Ввод данных | 2 | 10 |
| Наборщик данных №7 | Ввод данных | 2 | 10 |
| Партнерские сервисные услуги |  |  |  |

## Schedule

| ID | WBS | Task | Type | Duration | Start | Finish | Predecessors | Complete | Remaining | Total slack | Resources | Work | Actual work | Cost | Actual cost |
| --- | --- | --- | --- | --- | --- | --- | --- | --- | --- | --- | --- | --- | --- | --- | --- |
| 1 | 1 | Начало проекта | milestone | 0d | 2026-03-02 09:00 A | 2026-03-02 09:00 A |  | 100% |  |  |  |  |  |  |  |
| 2 | 2 | **Создание интерфейса** |  | 81.55d | 2026-03-02 09:00 A | 2026-06-29 17:23 | 1 | 85% | 11.88d | 0d |  | 592h | 352h | 6,079.25 | 4,049.25 |
| 3 | 2.1 | **Разработка дизайна интерфейса** |  | 38.38d | 2026-03-02 09:00 A | 2026-04-24 12:00 A |  | 100% |  |  |  | 352h | 352h | 3,199.25 | 3,199.25 |
| 4 | 2.1.1 | Разработка 2D графических элементов |  | 3.3w | 2026-03-02 09:00 A | 2026-03-25 17:00 A |  | 100% |  |  | Художник-дизайнер; Специальное ПО [0.6%] | 132h | 132h | 1,225 | 1,225 |
| 5 | 2.1.2 | Разработка 3D графических элементов |  | 2.2w | 2026-03-02 09:00 A | 2026-04-08 15:00 A | 4SS | 100% |  |  | 3D аниматор; Специальное ПО [0.6%] | 88h | 88h | 840 | 840 |
| 6 | 2.1.3 | Создание заставки |  | 3.3w | 2026-03-17 11:00 A | 2026-04-24 12:00 A | 5 | 100% |  |  | 3D аниматор; Специальное ПО [0.6%] | 132h | 132h | 1,134.25 | 1,134.25 |
| 7 | 2.2 | Программирование интерфейса |  | 1.5w | 2026-06-18 12:23 | 2026-06-29 17:23 | 3, 12 |  |  | 0d | Программист №3; Программист №4; Программист №1; Программист №2 | 240h |  | 1,880 |  |
| 8 | 3 | **Построение базы объектов** |  | 80.25d | 2026-03-24 12:00 A | 2026-07-17 18:00 |  | 45% | 44.01d | 8.8d | Сервер; Партнерские сервисные услуги [0.1%] | 5486h | 2214.02h | 13,365.6 | 6,105.6 |
| 9 | 3.1 | Анализ и построение структуры базы объектов |  | 2w | 2026-03-24 12:00 A | 2026-04-07 15:00 A |  | 100% |  |  | Системный аналитик | 80h | 80h | 1,900 | 1,900 |
| 10 | 3.2 | Программирование средств обработки базы объектов |  | 2w | 2026-04-07 15:00 A | 2026-04-21 15:00 A | 9 | 100% |  |  | Программист №3; Программист №4; Программист №2 | 240h | 240h | 2,037.6 | 2,037.6 |
| 11 | 3.3 | Наполнение базы объектов |  | 12w | 2026-04-21 15:00 A | 2026-07-17 18:00 | 10 | 27% | 8.78w | 8.8d | Наборщик данных №1; Наборщик данных №2; Наборщик данных №3; Наборщик данных №4; Наборщик данных №5 | 2400h | 645h | 4,850 | 1,340 |
| 12 | 4 | **Создание ядра GIS** |  | 74.05d | 2026-03-02 09:00 A | 2026-06-18 12:23 |  | 71% | 21.36d | 0d |  | 1938h | 1065.99h | 19,212.18 | 12,297.96 |
| 13 | 4.1 | Анализ и проектирование ядра |  | 3.73w | 2026-03-02 09:00 A | 2026-03-27 18:00 A |  | 100% |  |  | Ведущий программист; Системный аналитик | 298h | 298h | 4,870 | 4,870 |
| 14 | 4.2 | Создание модели ядра |  | 5.13w | 2026-03-24 12:00 A | 2026-04-29 09:00 | 13 | 99% | 0w | 0d | Ведущий программист; Программист №1 | 400h | 400h | 3,550.01 | 3,550.01 |
| 15 | 4.3 | Тестирование модели ядра |  | 0.5w | 2026-04-29 09:00 A | 2026-05-04 15:00 A | 14 | 100% |  |  | Программист №1; Программист №2 | 40h | 40h | 380 | 380 |
| 16 | 4.4 | Создание рабочей версии ядра |  | 6.11w | 2026-05-04 15:00 A | 2026-06-18 12:23 | 15 | 27% | 4.46w | 0d | Ведущий программист; Программист №1; Программист №2; Программист №3; Программист №4 | 1200h | 327.99h | 9,412.16 | 2,787.95 |
| 17 | 5 | Создание мультимедиа - наполнения |  | 6w | 2026-04-07 15:00 A | 2026-05-22 16:00 | 3 | 70% | 1.8w | 47.93d | Мультимедиа-корреспондент | 240h | 168h | 836.3 | 587.9 |
| 18 | 6 | Создание справочной системы |  | 2w | 2026-07-09 11:23 | 2026-07-23 14:23 | 7 |  |  | 5.26d | Технический писатель | 80h |  | 420 |  |
| 19 | 7 | **Создание руководства пользователя** |  | 17.38d | 2026-06-15 17:23 | 2026-07-09 11:23 | 7FS-10d |  |  | 0d |  | 160h |  | 1,010 |  |
| 20 | 7.1 | Разработка дизайна руководства |  | 1w | 2026-06-15 17:23 | 2026-06-23 09:23 |  |  |  | 0d | Художник-дизайнер | 40h |  | 390 |  |
| 21 | 7.2 | Написание руководства пользователя |  | 3w | 2026-06-17 17:23 | 2026-07-09 11:23 | 20SS+2d |  |  | 0d | Технический писатель | 120h |  | 620 |  |
| 22 | 8 | **Создание web - сайта и поддержка** |  | 23.62d | 2026-06-17 17:23 | 2026-07-21 14:23 |  |  |  | 0d |  | 248h |  | 2,106 |  |
| 23 | 8.1 | Разработка структуры сайта |  | 1d | 2026-06-17 17:23 | 2026-06-18 17:23 | 21SS |  |  | 0d | Web-дизайнер | 8h |  | 106 |  |
| 24 | 8.2 | Разработка дизайна сайта |  | 1.43w | 2026-06-18 17:23 | 2026-06-30 10:23 | 23 |  |  | 0d | 3D аниматор; Web-дизайнер; Художник-дизайнер | 120h |  | 1,110 |  |
| 25 | 8.3 | Наполнение сайта |  | 3w | 2026-06-30 10:23 | 2026-07-21 14:23 | 24 |  |  | 0d | Web-дизайнер | 120h |  | 890 |  |
| 26 | 9 | Тестирование сайта |  | 2.45w | 2026-07-14 14:23 | 2026-07-30 16:26 | 22FS-1w |  |  | 0d | Ведущий программист; Программист №1; Программист №2; Программист №3; Программист №4 | 480h |  | 3,945.15 |  |
| 27 | 10 | Сдача сайта в эксплуатацию | milestone | 0d | 2026-07-30 16:26 | 2026-07-30 16:26 | 26 |  |  | 0d |  |  |  |  |  |

| ID | WBS | Task | Duration | Start | Finish | Complete | Remaining | Total slack | Constraint | Resources | Work | Actual work | Cost | Actual cost |
| --- | --- | --- | --- | --- | --- | --- | --- | --- | --- | --- | --- | --- | --- | --- |
| 28 | 11 | **Совещание** | 100.75d | 2026-03-04 09:00 A | 2026-07-29 10:00 | 50% | 50.38d | 1.68d |  |  | 154h | 77h | 1,342 | 671 |
| 29 | 11.1 | Совещание 1 | 1h | 2026-03-04 09:00 A | 2026-03-04 10:00 A | 100% |  |  | start no earlier than 2026-03-04 09:00 | Web-дизайнер; Ведущий программист; Мультимедиа-корреспондент; Системный аналитик; Технический писатель; Художник-дизайнер; 3D аниматор | 7h | 7h | 61 | 61 |
| 30 | 11.2 | Совещание 2 | 1h | 2026-03-11 09:00 A | 2026-03-11 10:00 A | 100% |  |  | start no earlier than 2026-03-11 09:00 | 3D аниматор; Web-дизайнер; Ведущий программист; Мультимедиа-корреспондент; Системный аналитик; Технический писатель; Художник-дизайнер | 7h | 7h | 61 | 61 |
| 31 | 11.3 | Совещание 3 | 1h | 2026-03-18 09:00 A | 2026-03-18 10:00 A | 100% |  |  | start no earlier than 2026-03-18 09:00 | 3D аниматор; Web-дизайнер; Ведущий программист; Мультимедиа-корреспондент; Системный аналитик; Технический писатель; Художник-дизайнер | 7h | 7h | 61 | 61 |
| 32 | 11.4 | Совещание 4 | 1h | 2026-03-25 09:00 A | 2026-03-25 10:00 A | 100% |  |  | start no earlier than 2026-03-25 09:00 | 3D аниматор; Web-дизайнер; Ведущий программист; Мультимедиа-корреспондент; Системный аналитик; Технический писатель; Художник-дизайнер | 7h | 7h | 61 | 61 |
| 33 | 11.5 | Совещание 5 | 1h | 2026-04-01 09:00 A | 2026-04-01 10:00 A | 100% |  |  | start no earlier than 2026-04-01 09:00 | 3D аниматор; Web-дизайнер; Ведущий программист; Мультимедиа-корреспондент; Системный аналитик; Технический писатель; Художник-дизайнер | 7h | 7h | 61 | 61 |
| 34 | 11.6 | Совещание 6 | 1h | 2026-04-08 09:00 A | 2026-04-08 10:00 A | 100% |  |  | start no earlier than 2026-04-08 09:00 | 3D аниматор; Web-дизайнер; Ведущий программист; Мультимедиа-корреспондент; Системный аналитик; Технический писатель; Художник-дизайнер | 7h | 7h | 61 | 61 |
| 35 | 11.7 | Совещание 7 | 1h | 2026-04-15 09:00 A | 2026-04-15 10:00 A | 100% |  |  | start no earlier than 2026-04-15 09:00 | 3D аниматор; Web-дизайнер; Ведущий программист; Мультимедиа-корреспондент; Системный аналитик; Технический писатель; Художник-дизайнер | 7h | 7h | 61 | 61 |
| 36 | 11.8 | Совещание 8 | 1h | 2026-04-22 09:00 A | 2026-04-22 10:00 A | 100% |  |  | start no earlier than 2026-04-22 09:00 | 3D аниматор; Web-дизайнер; Ведущий программист; Мультимедиа-корреспондент; Системный аналитик; Технический писатель; Художник-дизайнер | 7h | 7h | 61 | 61 |
| 37 | 11.9 | Совещание 9 | 1h | 2026-04-29 09:00 A | 2026-04-29 10:00 A | 100% |  |  | start no earlier than 2026-04-29 09:00 | 3D аниматор; Web-дизайнер; Ведущий программист; Мультимедиа-корреспондент; Системный аналитик; Технический писатель; Художник-дизайнер | 7h | 7h | 61 | 61 |
| 38 | 11.10 | Совещание 10 | 1h | 2026-05-06 09:00 A | 2026-05-06 10:00 A | 100% |  |  | start no earlier than 2026-05-06 09:00 | 3D аниматор; Web-дизайнер; Ведущий программист; Мультимедиа-корреспондент; Системный аналитик; Технический писатель; Художник-дизайнер | 7h | 7h | 61 | 61 |
| 39 | 11.11 | Совещание 11 | 1h | 2026-05-13 09:00 A | 2026-05-13 10:00 A | 100% |  |  | start no earlier than 2026-05-13 09:00 | 3D аниматор; Web-дизайнер; Ведущий программист; Мультимедиа-корреспондент; Системный аналитик; Технический писатель; Художник-дизайнер | 7h | 7h | 61 | 61 |
| 40 | 11.12 | Совещание 12 | 1h | 2026-05-20 09:00 | 2026-05-20 10:00 |  |  | 50.55d | start no earlier than 2026-05-20 09:00 | 3D аниматор; Web-дизайнер; Ведущий программист; Мультимедиа-корреспондент; Системный аналитик; Технический писатель; Художник-дизайнер | 7h |  | 61 |  |
| 41 | 11.13 | Совещание 13 | 1h | 2026-05-27 09:00 | 2026-05-27 10:00 |  |  | 45.55d | start no earlier than 2026-05-27 09:00 | 3D аниматор; Web-дизайнер; Ведущий программист; Мультимедиа-корреспондент; Системный аналитик; Технический писатель; Художник-дизайнер | 7h |  | 61 |  |
| 42 | 11.14 | Совещание 14 | 1h | 2026-06-03 09:00 | 2026-06-03 10:00 |  |  | 40.55d | start no earlier than 2026-06-03 09:00 | 3D аниматор; Web-дизайнер; Ведущий программист; Мультимедиа-корреспондент; Системный аналитик; Технический писатель; Художник-дизайнер | 7h |  | 61 |  |
| 43 | 11.15 | Совещание 15 | 1h | 2026-06-10 09:00 | 2026-06-10 10:00 |  |  | 35.55d | start no earlier than 2026-06-10 09:00 | 3D аниматор; Web-дизайнер; Ведущий программист; Мультимедиа-корреспондент; Системный аналитик; Технический писатель; Художник-дизайнер | 7h |  | 61 |  |
| 44 | 11.16 | Совещание 16 | 1h | 2026-06-17 09:00 | 2026-06-17 10:00 |  |  | 31.68d | start no earlier than 2026-06-17 09:00 | 3D аниматор; Web-дизайнер; Ведущий программист; Мультимедиа-корреспондент; Системный аналитик; Технический писатель; Художник-дизайнер | 7h |  | 61 |  |
| 45 | 11.17 | Совещание 17 | 1h | 2026-06-24 09:00 | 2026-06-24 10:00 |  |  | 26.68d | start no earlier than 2026-06-24 09:00 | 3D аниматор; Web-дизайнер; Ведущий программист; Мультимедиа-корреспондент; Системный аналитик; Технический писатель; Художник-дизайнер | 7h |  | 61 |  |
| 46 | 11.18 | Совещание 18 | 1h | 2026-07-01 09:00 | 2026-07-01 10:00 |  |  | 21.68d | start no earlier than 2026-07-01 09:00 | 3D аниматор; Web-дизайнер; Ведущий программист; Мультимедиа-корреспондент; Системный аналитик; Технический писатель; Художник-дизайнер | 7h |  | 61 |  |
| 47 | 11.19 | Совещание 19 | 1h | 2026-07-08 09:00 | 2026-07-08 10:00 |  |  | 16.68d | start no earlier than 2026-07-08 09:00 | 3D аниматор; Web-дизайнер; Ведущий программист; Мультимедиа-корреспондент; Системный аналитик; Технический писатель; Художник-дизайнер | 7h |  | 61 |  |
| 48 | 11.20 | Совещание 20 | 1h | 2026-07-15 09:00 | 2026-07-15 10:00 |  |  | 11.68d | start no earlier than 2026-07-15 09:00 | 3D аниматор; Web-дизайнер; Ведущий программист; Мультимедиа-корреспондент; Системный аналитик; Технический писатель; Художник-дизайнер | 7h |  | 61 |  |
| 49 | 11.21 | Совещание 21 | 1h | 2026-07-22 09:00 | 2026-07-22 10:00 |  |  | 6.68d | start no earlier than 2026-07-22 09:00 | 3D аниматор; Web-дизайнер; Ведущий программист; Мультимедиа-корреспондент; Системный аналитик; Технический писатель; Художник-дизайнер | 7h |  | 61 |  |
| 50 | 11.22 | Совещание 22 | 1h | 2026-07-29 09:00 | 2026-07-29 10:00 |  |  | 1.68d | start no earlier than 2026-07-29 09:00 | 3D аниматор; Web-дизайнер; Ведущий программист; Мультимедиа-корреспондент; Системный аналитик; Технический писатель; Художник-дизайнер | 7h |  | 61 |  |
